Schedule from MS Project, 2017-08-28 to 2017-11-16, A marks actual dates.

## Calendars

- 标准: Mon-Fri 08:00-12:00, 13:00-17:00; Sat-Sun off. Exceptions (off unless hours are given): 2017-09-30 08:00-12:00, 13:00-17:00 (国庆补班), 2017-10-01 to 2017-10-08 (国庆休假).

## Resources

| Resource |
| --- |
| Samson |
| Max |
| Hunter |
| Alex |
| Harry |
| Lance |
| Calvin |
| Jagger |
| Randy |

## Schedule

| ID | WBS | Task | Duration | Start | Finish | Predecessors | Complete | Remaining | Total slack | Free slack | Constraint | Resources | Work | Actual work |
| --- | --- | --- | --- | --- | --- | --- | --- | --- | --- | --- | --- | --- | --- | --- |
| 1 | 1 | **直播项目（流媒体服务器及App）** | 55d? | 2017-08-28 A | 2017-11-16 |  | 81% | 10.34d? | 0d |  |  |  | 3228h | 2504h |
| 2 | 1.1 | **App项目** | 55d? | 2017-08-28 A | 2017-11-16 |  | 81% | 10.34d? | 0d |  |  |  | 3228h | 2504h |
| 3 | 1.1.1 | **公共模块** | 37d? | 2017-08-29 A | 2017-10-24 A |  | 100% |  |  |  |  |  | 136h | 136h |
| 4 | 1.1.1.1 | **rtmp上传客户端** | 4.25d? | 2017-08-29 A | 2017-09-04 A |  | 100% |  |  |  |  |  | 40h | 40h |
| 5 | 1.1.1.1.1 | 静音功能&iOS后台播放 | 5d? | 2017-08-29 A | 2017-09-04 A |  | 100% |  |  |  | start no earlier than 2017-08-29 | Max | 40h | 40h |
| 6 | 1.1.1.2 | **rtmp播放客户端** | 2.38d? | 2017-10-08 A | 2017-10-11 A |  | 100% |  |  |  |  |  | 24h | 24h |
| 7 | 1.1.1.2.1 | 断线自动重连逻辑（包括自动切换流媒体服务器） | 3d? | 2017-10-08 A | 2017-10-11 A | 164 | 100% |  |  |  |  | Max | 24h | 24h |
| 8 | 1.1.1.3 | **WebSocket模块支持wss** | 9d? | 2017-10-12 A | 2017-10-24 A |  | 100% |  |  |  |  |  | 72h | 72h |
| 9 | 1.1.1.3.1 | 编译OpenSSL到WebSocket模块，使其支持wss，并完成测试 | 9d? | 2017-10-12 A | 2017-10-24 A | 173 | 100% |  |  |  |  | Alex | 72h | 72h |
| 10 | 1.1.2 | **Android App** | 55d? | 2017-08-28 A | 2017-11-16 |  | 82% | 10.06d? | 0d |  |  |  | 1376h | 1072h |
| 11 | 1.1.2.1 | **开发工作** | 48.01d? | 2017-08-28 A | 2017-11-08 |  | 86% | 6.77d? | 0d |  |  |  | 1248h | 1072h |
| 12 | 1.1.2.1.1 | **QN对接直播** | 41.38d? | 2017-08-29 A | 2017-10-31 |  | 90% | 4.24d? | 1.5d |  |  |  | 156h | 140h |
| 13 | 1.1.2.1.1.1 | **修改Push流程** | 8.5d? | 2017-08-29 A | 2017-09-08 A |  | 100% |  |  |  |  |  | 80h | 80h |
| 14 | 1.1.2.1.1.1.1 | 修改Push流程 | 5d? | 2017-08-29 A | 2017-09-04 A |  | 100% |  |  |  | start no earlier than 2017-08-29 | Jagger | 40h | 40h |
| 15 | 1.1.2.1.1.1.2 | 调试 | 5d? | 2017-09-04 A | 2017-09-08 A | 14 | 100% |  |  |  |  | Jagger | 40h | 40h |
| 16 | 1.1.2.1.1.2 | **内嵌直播模块** | 28.12d? | 2017-09-15 A | 2017-10-31 |  | 79% | 5.92d? | 1.5d |  |  |  | 76h | 60h |
| 17 | 1.1.2.1.1.2.1 | 对接公共模块 | 2d? | 2017-09-15 A | 2017-09-19 A | 269 | 100% |  |  |  |  | Jagger | 16h | 16h |
| 18 | 1.1.2.1.1.2.2 | 主界面左侧导航栏接口（包括新消息提醒） | 1d? | 2017-10-19 A | 2017-10-20 A | 26 | 100% |  |  |  |  | Jagger | 8h | 8h |
| 19 | 1.1.2.1.1.2.3 | OnlineLady列表上方直播广告（包括通过登录返回标记，判断是否显示） | 1.5d? | 2017-10-20 A | 2017-10-24 A | 18 | 100% |  |  |  |  | Jagger | 12h | 12h |
| 20 | 1.1.2.1.1.2.4 | 处理Android 6.0+的兼容问题 | 3d? | 2017-10-24 A | 2017-10-27 A | 19 | 100% |  |  |  |  | Jagger | 24h | 24h |
| 21 | 1.1.2.1.1.2.5 | 直播新手引导（包括登录返回标记判断，记录是否已经打开过） | 2d? | 2017-10-27 | 2017-10-31 | 20 |  |  | 1.5d | 0d |  | Jagger | 16h |  |
| 22 | 1.1.2.1.2 | **直播对接QN** | 15.38d? | 2017-09-22 A | 2017-10-19 A |  | 100% |  |  |  |  |  | 64h | 64h |
| 23 | 1.1.2.1.2.1 | 对接QN公共模块 | 3d? | 2017-10-11 A | 2017-10-16 A | 120 | 100% |  |  |  |  | Jagger | 24h | 24h |
| 24 | 1.1.2.1.2.2 | **OnlineLady列表上方直播广告（使用《获取Hot列表》接口，包括记下展开及收起状态）** | 2.62d? | 2017-09-22 A | 2017-09-27 A |  | 100% |  |  |  |  |  | 24h | 24h |
| 25 | 1.1.2.1.2.2.1 | 广告控件 | 3d? | 2017-09-22 A | 2017-09-27 A | 111 | 100% |  |  |  |  | Jagger | 24h | 24h |
| 26 | 1.1.2.1.2.3 | 直播列表新手引导 | 2d? | 2017-10-17 A | 2017-10-19 A | 36 | 100% |  |  |  |  | Jagger | 16h | 16h |

| ID | WBS | Task | Duration | Start | Finish | Predecessors | Complete | Remaining | Total slack | Free slack | Constraint | Resources | Work | Actual work |
| --- | --- | --- | --- | --- | --- | --- | --- | --- | --- | --- | --- | --- | --- | --- |
| 27 | 1.1.2.1.3 | **公共部分** | 48.01d? | 2017-08-28 A | 2017-11-08 |  | 71% | 13.72d? | 0d |  |  |  | 112h | 80h |
| 28 | 1.1.2.1.3.1 | 接口 | 5d? | 2017-08-28 A | 2017-09-01 A |  | 100% |  |  |  | start no earlier than 2017-08-28 | Hunter | 40h | 40h |
| 29 | 1.1.2.1.3.2 | URL跳模块（包括点击Push或Link按钮） | 5d? | 2017-10-27 A | 2017-11-02 A | 131 | 100% |  |  |  |  | Hunter | 40h | 40h |
| 30 | 1.1.2.1.3.3 | 同步配置 | 1d? | 2017-10-31 | 2017-11-01 | 21 |  |  | 1.5d | 0d |  | Jagger | 8h |  |
| 31 | 1.1.2.1.3.4 | rtmp测速功能 | 2d? | 2017-11-01 | 2017-11-03 | 30 |  |  | 1.5d |  |  | Jagger | 16h |  |
| 32 | 1.1.2.1.3.5 | 解决系统权限与业务逻辑冲突问题 | 1d? | 2017-11-07 | 2017-11-08 | 101 |  |  | 0d |  |  | Hunter | 8h |  |
| 33 | 1.1.2.1.4 | **登录** | 4.63d? | 2017-10-07 A | 2017-10-13 A |  | 100% |  |  |  |  |  | 56h | 56h |
| 34 | 1.1.2.1.4.1 | 登录管理器（包括超时重登录，不断的自动登录） | 7d? | 2017-10-07 A | 2017-10-13 A | 134 | 100% |  |  |  |  | Hunter | 56h | 56h |
| 35 | 1.1.2.1.5 | **充值** | 1d? | 2017-10-16 A | 2017-10-17 A |  | 100% |  |  |  |  |  | 8h | 8h |
| 36 | 1.1.2.1.5.1 | 充值功能（内嵌Web） | 1d? | 2017-10-16 A | 2017-10-17 A | 23 | 100% |  |  |  |  | Jagger | 8h | 8h |
| 37 | 1.1.2.1.6 | **直播列表** | 40.75d? | 2017-09-01 A | 2017-11-02 |  | 80% | 8.15d? | 3d |  |  |  | 40h | 32h |
| 38 | 1.1.2.1.6.1 | Hot及Following列表（包括指引banner） | 2d? | 2017-09-01 A | 2017-09-05 A | 28 | 100% |  |  |  |  | Hunter | 16h | 16h |
| 39 | 1.1.2.1.6.2 | 弹出Push（包括立即/预约邀请、预约倒计时） | 2d? | 2017-09-14 A | 2017-09-18 A | 129 | 100% |  |  |  |  | Hunter | 16h | 16h |
| 40 | 1.1.2.1.6.3 | Hot及Following列表头部广告 | 1d? | 2017-11-02 | 2017-11-02 | 136 |  |  | 3d |  |  | Harry | 8h |  |
| 41 | 1.1.2.1.7 | **主播个人资料** | 2.62d? | 2017-10-26 | 2017-10-31 |  |  |  | 2.88d |  |  |  | 24h |  |
| 42 | 1.1.2.1.7.1 | 内嵌Web（包括JS交互） | 3d? | 2017-10-26 | 2017-10-31 | 113 |  |  | 2.88d | 0d |  | Harry | 24h |  |
| 43 | 1.1.2.1.8 | **直播间** | 46.38d? | 2017-08-29 A | 2017-11-07 |  | 96% | 1.99d? | 0d |  |  |  | 560h | 536h |
| 44 | 1.1.2.1.8.1 | **公共处理** | 2.12d? | 2017-11-02 | 2017-11-06 |  |  |  | 0d |  |  |  | 20h |  |
| 45 | 1.1.2.1.8.1.1 | 直播间断线重连逻辑 | 1d? | 2017-11-02 | 2017-11-03 | 29 |  |  | 0d |  |  | Hunter | 8h |  |
| 46 | 1.1.2.1.8.1.2 | 进入直播间的过渡界面及逻辑 | 1.5d? | 2017-11-03 | 2017-11-06 | 45 |  |  | 0d |  |  | Hunter | 12h |  |
| 47 | 1.1.2.1.8.2 | **免费公开直播间** | 21.62d? | 2017-08-29 A | 2017-09-27 A |  | 100% |  |  |  |  |  | 236h | 236h |
| 48 | 1.1.2.1.8.2.1 | **直播间布局** | 1.62d? | 2017-08-29 A | 2017-08-30 A |  | 100% |  |  |  |  |  | 16h | 16h |
| 49 | 1.1.2.1.8.2.1.1 | 直播间布局（包括直播间头，操作控件） | 2d? | 2017-08-29 A | 2017-08-30 A |  | 100% |  |  |  | start no earlier than 2017-08-29 | Harry | 16h | 16h |
| 50 | 1.1.2.1.8.2.2 | **过渡界面** | 1.62d? | 2017-09-05 A | 2017-09-06 A |  | 100% |  |  |  |  |  | 16h | 16h |
| 51 | 1.1.2.1.8.2.2.1 | 过渡界面及业务逻辑（包括直播间已关闭、人数限制、余额不足等提示） | 2d? | 2017-09-05 A | 2017-09-06 A | 38 | 100% |  |  |  |  | Hunter | 16h | 16h |

| ID | WBS | Task | Duration | Start | Finish | Predecessors | Complete | Resources | Work | Actual work |
| --- | --- | --- | --- | --- | --- | --- | --- | --- | --- | --- |
| 52 | 1.1.2.1.8.2.3 | **主播（左上角）** | 2.62d? | 2017-08-30 A | 2017-09-04 A |  | 100% |  | 24h | 24h |
| 53 | 1.1.2.1.8.2.3.1 | 类型标识（包括点击弹出资费提示） | 2d? | 2017-08-30 A | 2017-09-01 A | 49 | 100% | Harry | 16h | 16h |
| 54 | 1.1.2.1.8.2.3.2 | 修改主播显示（左上角） | 0.5d? | 2017-09-01 A | 2017-09-01 A | 53 | 100% | Harry | 4h | 4h |
| 55 | 1.1.2.1.8.2.3.3 | 添加关注 | 0.5d? | 2017-09-01 A | 2017-09-04 A | 54 | 100% | Harry | 4h | 4h |
| 56 | 1.1.2.1.8.2.4 | **观众** | 5.75d? | 2017-09-04 A | 2017-09-11 A |  | 100% |  | 56h | 56h |
| 57 | 1.1.2.1.8.2.4.1 | 观众列表控件 | 3d? | 2017-09-04 A | 2017-09-06 A | 55 | 100% | Harry | 24h | 24h |
| 58 | 1.1.2.1.8.2.4.2 | 观众进入/退出直接间数量计算、进入直播间提示 | 0.5d? | 2017-09-06 A | 2017-09-07 A | 51 | 100% | Hunter | 4h | 4h |
| 59 | 1.1.2.1.8.2.4.3 | 观众进入座驾播放控件 | 0.5d? | 2017-09-06 A | 2017-09-07 A | 57 | 100% | Harry | 4h | 4h |
| 60 | 1.1.2.1.8.2.4.4 | 播放进入座驾队列 | 3d? | 2017-09-07 A | 2017-09-11 A | 59 | 100% | Harry | 24h | 24h |
| 61 | 1.1.2.1.8.2.5 | **礼物** | 2.62d? | 2017-09-12 A | 2017-09-14 A |  | 100% |  | 24h | 24h |
| 62 | 1.1.2.1.8.2.5.1 | 调试礼物发送及显示 | 3d? | 2017-09-12 A | 2017-09-14 A | 60 | 100% | Harry | 24h | 24h |
| 63 | 1.1.2.1.8.2.6 | **弹幕** | 0.62d? | 2017-09-14 A | 2017-09-15 A |  | 100% |  | 8h | 8h |
| 64 | 1.1.2.1.8.2.6.1 | 显示及发送 | 1d? | 2017-09-14 A | 2017-09-15 A | 62 | 100% | Harry | 8h | 8h |
| 65 | 1.1.2.1.8.2.7 | **文本消息** | 2d? | 2017-09-15 A | 2017-09-19 A |  | 100% |  | 16h | 16h |
| 66 | 1.1.2.1.8.2.7.1 | 显示公告 | 2d? | 2017-09-15 A | 2017-09-19 A | 64 | 100% | Harry | 16h | 16h |
| 67 | 1.1.2.1.8.2.8 | **返点/余额** | 1.62d? | 2017-09-07 A | 2017-09-08 A |  | 100% |  | 16h | 16h |
| 68 | 1.1.2.1.8.2.8.1 | 返点及余额管理器 | 2d? | 2017-09-07 A | 2017-09-08 A | 58 | 100% | Hunter | 16h | 16h |
| 69 | 1.1.2.1.8.2.9 | **直播间样式** | 1.12d? | 2017-09-19 A | 2017-09-20 A |  | 100% |  | 12h | 12h |
| 70 | 1.1.2.1.8.2.9.1 | 调试直播间样式（包括文本消息等） | 1.5d? | 2017-09-19 A | 2017-09-20 A | 66 | 100% | Harry | 12h | 12h |
| 71 | 1.1.2.1.8.2.10 | **直播结束** | 1d? | 2017-09-20 A | 2017-09-21 A |  | 100% |  | 8h | 8h |
| 72 | 1.1.2.1.8.2.10.1 | 直播结束显示界面 | 1d? | 2017-09-20 A | 2017-09-21 A | 70 | 100% | Harry | 8h | 8h |
| 73 | 1.1.2.1.8.2.11 | **直播间调试** | 4.25d? | 2017-09-21 A | 2017-09-27 A |  | 100% |  | 40h | 40h |
| 74 | 1.1.2.1.8.2.11.1 | 直播间调试 | 5d? | 2017-09-21 A | 2017-09-27 A | 72 | 100% | Harry | 40h | 40h |
| 75 | 1.1.2.1.8.3 | **付费公开直播间** | 5.12d? | 2017-09-27 A | 2017-10-10 A |  | 100% |  | 76h | 76h |
| 76 | 1.1.2.1.8.3.1 | **直播间布局** | 1.62d? | 2017-09-27 A | 2017-09-29 A |  | 100% |  | 16h | 16h |
| 77 | 1.1.2.1.8.3.1.1 | 直播间布局（包括直播间头，操作控件） | 2d? | 2017-09-27 A | 2017-09-29 A | 74 | 100% | Harry | 16h | 16h |

| ID | WBS | Task | Duration | Start | Finish | Predecessors | Complete | Remaining | Total slack | Resources | Work | Actual work |
| --- | --- | --- | --- | --- | --- | --- | --- | --- | --- | --- | --- | --- |
| 78 | 1.1.2.1.8.3.2 | **直播间样式** | 1.5d? | 2017-09-29 A | 2017-09-30 A |  | 100% |  |  |  | 12h | 12h |
| 79 | 1.1.2.1.8.3.2.1 | 调试直播间样式（包括文本消息等） | 1.5d? | 2017-09-29 A | 2017-09-30 A | 77 | 100% |  |  | Harry | 12h | 12h |
| 80 | 1.1.2.1.8.3.3 | **观众** | 0.25d? | 2017-09-30 A | 2017-10-05 A |  | 100% |  |  |  | 8h | 8h |
| 81 | 1.1.2.1.8.3.3.1 | 观众列表控件(显示与免费公开直播间不同) | 1d? | 2017-09-30 A | 2017-10-05 A | 79 | 100% |  |  | Harry | 8h | 8h |
| 82 | 1.1.2.1.8.3.4 | **返回/余额** | 0d? | 2017-10-05 A | 2017-10-07 A |  | 100% |  |  |  | 16h | 16h |
| 83 | 1.1.2.1.8.3.4.1 | 直播间显示返点控件 | 2d? | 2017-10-05 A | 2017-10-07 A | 81 | 100% |  |  | Harry | 16h | 16h |
| 84 | 1.1.2.1.8.3.5 | **直播间调试** | 1.75d? | 2017-10-07 A | 2017-10-10 A |  | 100% |  |  |  | 24h | 24h |
| 85 | 1.1.2.1.8.3.5.1 | 直播间调试 | 3d? | 2017-10-07 A | 2017-10-10 A | 83 | 100% |  |  | Harry | 24h | 24h |
| 86 | 1.1.2.1.8.4 | **普通私密直播间** | 37.38d? | 2017-09-11 A | 2017-11-07 |  | 97% | 0.98d? | 0d |  | 152h | 148h |
| 87 | 1.1.2.1.8.4.1 | **直播间布局** | 0.62d? | 2017-10-10 A | 2017-10-11 A |  | 100% |  |  |  | 8h | 8h |
| 88 | 1.1.2.1.8.4.1.1 | 直播间布局（包括直播间头，操作控件） | 1d? | 2017-10-10 A | 2017-10-11 A | 85 | 100% |  |  | Harry | 8h | 8h |
| 89 | 1.1.2.1.8.4.2 | **直播间样式** | 1.5d? | 2017-10-11 A | 2017-10-12 A |  | 100% |  |  |  | 12h | 12h |
| 90 | 1.1.2.1.8.4.2.1 | 调试直播间样式 | 1.5d? | 2017-10-11 A | 2017-10-12 A | 88 | 100% |  |  | Harry | 12h | 12h |
| 91 | 1.1.2.1.8.4.3 | **观众及主播** | 0.62d? | 2017-10-12 A | 2017-10-13 A |  | 100% |  |  |  | 8h | 8h |
| 92 | 1.1.2.1.8.4.3.1 | 观众及主播控件（包括点击弹出亲密度说明） | 1d? | 2017-10-12 A | 2017-10-13 A | 90 | 100% |  |  | Harry | 8h | 8h |
| 93 | 1.1.2.1.8.4.4 | **表情** | 2d? | 2017-10-13 A | 2017-10-17 A |  | 100% |  |  |  | 16h | 16h |
| 94 | 1.1.2.1.8.4.4.1 | 表情列表控件、表情管理器、显示及发送 | 2d? | 2017-10-13 A | 2017-10-17 A | 92 | 100% |  |  | Harry | 16h | 16h |
| 95 | 1.1.2.1.8.4.5 | **过渡界面** | 2d? | 2017-09-11 A | 2017-09-12 A |  | 100% |  |  |  | 16h | 16h |
| 96 | 1.1.2.1.8.4.5.1 | 过渡界面及业务逻辑（包括倒数及等待等逻辑） | 2d? | 2017-09-11 A | 2017-09-12 A | 68 | 100% |  |  | Hunter | 16h | 16h |
| 97 | 1.1.2.1.8.4.6 | **礼物** | 1d? | 2017-09-18 A | 2017-09-19 A |  | 100% |  |  |  | 8h | 8h |
| 98 | 1.1.2.1.8.4.6.1 | 推荐礼物功能 | 1d? | 2017-09-18 A | 2017-09-19 A | 39 | 100% |  |  | Hunter | 8h | 8h |
| 99 | 1.1.2.1.8.4.7 | **双向视频** | 31.13d? | 2017-09-19 A | 2017-11-07 |  | 93% | 2.08d? | 0d |  | 60h | 56h |
| 100 | 1.1.2.1.8.4.7.1 | 上传视频管理器及视频控件（包括视频及声音开关） | 7d? | 2017-09-19 A | 2017-09-27 A | 98 | 100% |  |  | Hunter | 56h | 56h |
| 101 | 1.1.2.1.8.4.7.2 | 断线重连逻辑 | 0.5d? | 2017-11-06 | 2017-11-07 | 46 |  |  | 0d | Hunter | 4h |  |

| ID | WBS | Task | Duration | Start | Finish | Predecessors | Complete | Resources | Work | Actual work |
| --- | --- | --- | --- | --- | --- | --- | --- | --- | --- | --- |
| 102 | 1.1.2.1.8.4.8 | **直播间调试** | 2.5d? | 2017-10-17 A | 2017-10-19 A |  | 100% |  | 24h | 24h |
| 103 | 1.1.2.1.8.4.8.1 | 直播间调试 | 3d? | 2017-10-17 A | 2017-10-19 A | 94 | 100% | Harry | 24h | 24h |
| 104 | 1.1.2.1.8.5 | **豪华私密直播间** | 23.62d? | 2017-09-19 A | 2017-10-26 A |  | 100% |  | 76h | 76h |
| 105 | 1.1.2.1.8.5.1 | **直播间布局** | 0.75d? | 2017-10-19 A | 2017-10-20 A |  | 100% |  | 8h | 8h |
| 106 | 1.1.2.1.8.5.1.1 | 直播间布局（包括直播间头，操作控件） | 1d? | 2017-10-19 A | 2017-10-20 A | 103 | 100% | Harry | 8h | 8h |
| 107 | 1.1.2.1.8.5.2 | **直播间样式** | 1.5d? | 2017-10-20 A | 2017-10-24 A |  | 100% |  | 12h | 12h |
| 108 | 1.1.2.1.8.5.2.1 | 调试直播间样式 | 1.5d? | 2017-10-20 A | 2017-10-24 A | 106 | 100% | Harry | 12h | 12h |
| 109 | 1.1.2.1.8.5.3 | **才艺点播** | 3.25d? | 2017-09-19 A | 2017-09-22 A |  | 100% |  | 32h | 32h |
| 110 | 1.1.2.1.8.5.3.1 | 才艺点播管理器 | 2d? | 2017-09-19 A | 2017-09-20 A | 17 | 100% | Jagger | 16h | 16h |
| 111 | 1.1.2.1.8.5.3.2 | 才艺点播界面 | 2d? | 2017-09-20 A | 2017-09-22 A | 110 | 100% | Jagger | 16h | 16h |
| 112 | 1.1.2.1.8.5.4 | **直播间调试** | 2.62d? | 2017-10-24 A | 2017-10-26 A |  | 100% |  | 24h | 24h |
| 113 | 1.1.2.1.8.5.4.1 | 直播间调试 | 3d? | 2017-10-24 A | 2017-10-26 A | 108 | 100% | Harry | 24h | 24h |
| 114 | 1.1.2.1.9 | **预约直播** | 6.75d? | 2017-09-27 A | 2017-10-11 A |  | 100% |  | 60h | 60h |
| 115 | 1.1.2.1.9.1 | **预约直播界面** | 5.88d? | 2017-09-27 A | 2017-10-10 A |  | 100% |  | 52h | 52h |
| 116 | 1.1.2.1.9.1.1 | 日期控件、时间控件 | 1d? | 2017-09-27 A | 2017-09-28 A | 25 | 100% | Jagger | 8h | 8h |
| 117 | 1.1.2.1.9.1.2 | 选虚拟礼物功能 | 3d? | 2017-09-28 A | 2017-09-30 A | 116 | 100% | Jagger | 24h | 24h |
| 118 | 1.1.2.1.9.1.3 | 接收短信通知功能（包括验证手机号） | 1.5d? | 2017-09-30 A | 2017-10-10 A | 117 | 100% | Jagger | 12h | 12h |
| 119 | 1.1.2.1.9.1.4 | 提交预约接口及业务逻辑 | 1d? | 2017-10-10 A | 2017-10-10 A | 118 | 100% | Jagger | 8h | 8h |
| 120 | 1.1.2.1.9.2 | 预约成功界面 | 1d? | 2017-10-10 A | 2017-10-11 A | 119 | 100% | Jagger | 8h | 8h |
| 121 | 1.1.2.1.10 | **个人中心** | 22.25d? | 2017-09-12 A | 2017-10-19 A |  | 100% |  | 48h | 48h |
| 122 | 1.1.2.1.10.1 | **个人中心列表界面** | 0.62d? | 2017-09-12 A | 2017-09-13 A |  | 100% |  | 8h | 8h |
| 123 | 1.1.2.1.10.1.1 | 界面及接口 | 1d? | 2017-09-12 A | 2017-09-13 A | 96 | 100% | Hunter | 8h | 8h |
| 124 | 1.1.2.1.10.2 | **我的预约** | 2d? | 2017-10-13 A | 2017-10-17 A |  | 100% |  | 16h | 16h |
| 125 | 1.1.2.1.10.2.1 | 观众待确认列表、主播待确认列表、已确认列表、历史列表 | 2d? | 2017-10-13 A | 2017-10-17 A | 34 | 100% | Hunter | 16h | 16h |

| ID | WBS | Task | Duration | Start | Finish | Predecessors | Complete | Remaining | Total slack | Free slack | Constraint | Resources | Work | Actual work |
| --- | --- | --- | --- | --- | --- | --- | --- | --- | --- | --- | --- | --- | --- | --- |
| 126 | 1.1.2.1.10.3 | **我的背包** | 1.62d? | 2017-10-17 A | 2017-10-19 A |  | 100% |  |  |  |  |  | 16h | 16h |
| 127 | 1.1.2.1.10.3.1 | 试用券列表、礼物列表、座驾列表（包括使用座驾） | 2d? | 2017-10-17 A | 2017-10-19 A | 125 | 100% |  |  |  |  | Hunter | 16h | 16h |
| 128 | 1.1.2.1.10.4 | **我的等级** | 1d? | 2017-09-13 A | 2017-09-14 A |  | 100% |  |  |  |  |  | 8h | 8h |
| 129 | 1.1.2.1.10.4.1 | 内嵌Web页 | 1d? | 2017-09-13 A | 2017-09-14 A | 123 | 100% |  |  |  |  | Hunter | 8h | 8h |
| 130 | 1.1.2.1.11 | **用户行为跟踪** | 5.88d? | 2017-10-19 | 2017-10-27 |  |  |  | 7.88d |  |  |  | 56h |  |
| 131 | 1.1.2.1.11.1 | GoogleAnalytics跟踪 | 7d? | 2017-10-19 | 2017-10-27 | 127 |  |  | 7.88d |  |  | Hunter | 56h |  |
| 132 | 1.1.2.1.12 | **公共处理** | 3.88d? | 2017-09-27 A | 2017-10-07 A |  | 100% |  |  |  |  |  | 48h | 48h |
| 133 | 1.1.2.1.12.1 | 内嵌Web加载不成功，显示错误页 | 3d? | 2017-09-27 A | 2017-09-29 A | 100 | 100% |  |  |  |  | Hunter | 24h | 24h |
| 134 | 1.1.2.1.12.2 | 列表网络错误 | 3d? | 2017-09-29 A | 2017-10-07 A | 133 | 100% |  |  |  |  | Hunter | 24h | 24h |
| 135 | 1.1.2.1.13 | **勋章功能** | 1.62d? | 2017-10-31 | 2017-11-02 |  |  |  | 2.88d |  |  |  | 16h |  |
| 136 | 1.1.2.1.13.1 | 直播间聊天列表增加勋章显示 | 2d? | 2017-10-31 | 2017-11-02 | 42 |  |  | 2.88d | 0d |  | Harry | 16h |  |
| 137 | 1.1.2.2 | 调试 | 8d? | 2017-11-08 | 2017-11-16 | 11 |  |  | 0d |  |  | Hunter; Harry | 128h |  |
| 138 | 1.1.3 | **iOS App** | 52.12d? | 2017-08-29 A | 2017-11-15 |  | 79% | 10.83d? | 1.88d |  |  |  | 1716h | 1296h |
| 139 | 1.1.3.1 | **开发工作** | 43.62d? | 2017-08-29 A | 2017-11-02 |  | 83% | 7.29d? | 1.75d | 0d |  |  | 1556h | 1296h |
| 140 | 1.1.3.1.1 | **QN对接直播** | 38.12d? | 2017-09-05 A | 2017-11-02 |  | 41% | 22.55d? | 2.25d |  |  |  | 284h | 116h |
| 141 | 1.1.3.1.1.1 | **调研动态库上传AppStore** | 2d? | 2017-09-05 A | 2017-09-06 A |  | 100% |  |  |  |  |  | 16h | 16h |
| 142 | 1.1.3.1.1.1.1 | 开发测试动态库 | 2d? | 2017-09-05 A | 2017-09-06 A |  | 100% |  |  |  | start no earlier than 2017-09-05 | Calvin | 16h | 16h |
| 143 | 1.1.3.1.1.2 | **修改Push流程** | 5d? | 2017-09-12 A | 2017-09-18 A |  | 100% |  |  |  |  |  | 40h | 40h |
| 144 | 1.1.3.1.1.2.1 | 修改Push流程 | 5d? | 2017-09-12 A | 2017-09-18 A | 146 | 100% |  |  |  |  | Calvin | 40h | 40h |
| 145 | 1.1.3.1.1.3 | **内嵌直播模块** | 36.12d? | 2017-09-07 A | 2017-11-02 |  | 26% | 26.62d? | 2.25d |  |  |  | 228h | 60h |
| 146 | 1.1.3.1.1.3.1 | 对接公共模块 | 3d? | 2017-09-07 A | 2017-09-11 A | 142 | 100% |  |  |  |  | Calvin | 24h | 24h |
| 147 | 1.1.3.1.1.3.2 | 主界面左侧导航栏接口（包括新消息提醒） | 1d? | 2017-10-09 A | 2017-10-09 A | 261 | 100% |  |  |  | start no earlier than 2017-09-01 | Lance | 8h | 8h |
| 148 | 1.1.3.1.1.3.3 | OnlineLady列表上方直播广告（包括通过登录返回标记，判断是否显示） | 1.5d? | 2017-10-10 A | 2017-10-11 A | 147 | 100% |  |  |  |  | Lance | 12h | 12h |
| 149 | 1.1.3.1.1.3.4 | 直播新手引导（包括登录返回标记判断，记录是否已经打开过） | 2d? | 2017-10-11 A | 2017-10-13 A | 148 | 100% |  |  |  |  | Lance | 16h | 16h |
| 150 | 1.1.3.1.1.3.5 | 整理公共代码（包括修改直播代码，解决类名相同导致运行异常等问题） | 16d? | 2017-10-13 | 2017-11-02 | 169 |  |  | 2.25d |  |  | Max | 128h |  |
| 151 | 1.1.3.1.1.3.6 | 开发Push跳转流程（包括在直播模块点击QN Push，及在QN点击直播Push） | 5d? | 2017-10-23 | 2017-10-30 | 255 |  |  | 2.88d | 0d |  | Calvin | 40h |  |

| ID | WBS | Task | Duration | Start | Finish | Predecessors | Complete | Remaining | Total slack | Free slack | Constraint | Resources | Work | Actual work |
| --- | --- | --- | --- | --- | --- | --- | --- | --- | --- | --- | --- | --- | --- | --- |
| 152 | 1.1.3.1.2 | **直播对接QN** | 27.25d? | 2017-09-04 A | 2017-10-17 A |  | 100% |  |  |  |  |  | 80h | 80h |
| 153 | 1.1.3.1.2.1 | 对接QN公共模块 | 3d? | 2017-09-04 A | 2017-09-06 A | 5 | 100% |  |  |  |  | Max | 24h | 24h |
| 154 | 1.1.3.1.2.2 | **OnlineLady列表上方直播广告（使用《获取Hot列表》接口，包括记下展开及收起状态）** | 5d? | 2017-09-12 A | 2017-09-18 A |  | 100% |  |  |  |  |  | 40h | 40h |
| 155 | 1.1.3.1.2.2.1 | 广告控件 | 4d? | 2017-09-12 A | 2017-09-15 A | 262 | 100% |  |  |  |  | Lance | 32h | 32h |
| 156 | 1.1.3.1.2.2.2 | 点击事件跳转 | 1d? | 2017-09-18 A | 2017-09-18 A | 155 | 100% |  |  |  |  | Lance | 8h | 8h |
| 157 | 1.1.3.1.2.3 | 直播列表新手引导 | 2d? | 2017-10-13 A | 2017-10-17 A | 149 | 100% |  |  |  |  | Lance | 16h | 16h |
| 158 | 1.1.3.1.3 | **公共部分** | 40.62d? | 2017-09-01 A | 2017-11-02 |  | 88% | 5.08d? | 1.75d |  |  |  | 192h | 168h |
| 159 | 1.1.3.1.3.1 | 接口 | 16d? | 2017-09-01 A | 2017-09-22 A |  | 100% |  |  |  | start no earlier than 2017-09-01 | Alex | 128h | 128h |
| 160 | 1.1.3.1.3.2 | URL跳模块（包括点击Push或Link按钮） | 5d? | 2017-09-19 A | 2017-09-25 A | 156 | 100% |  |  |  |  | Lance | 40h | 40h |
| 161 | 1.1.3.1.3.3 | 同步配置 | 1d? | 2017-10-31 | 2017-10-31 | 264 |  |  | 1.75d | 0d |  | Randy | 8h |  |
| 162 | 1.1.3.1.3.4 | rtmp测速功能 | 2d? | 2017-10-31 | 2017-11-02 | 161 |  |  | 1.75d |  |  | Randy | 16h |  |
| 163 | 1.1.3.1.4 | **登录** | 3.88d? | 2017-09-27 A | 2017-10-08 A |  | 100% |  |  |  |  |  | 56h | 56h |
| 164 | 1.1.3.1.4.1 | 登录管理器（包括超时重登录，不断的自动登录） | 7d? | 2017-09-27 A | 2017-10-08 A | 241 | 100% |  |  |  |  | Max | 56h | 56h |
| 165 | 1.1.3.1.5 | **充值** | 2d? | 2017-09-26 A | 2017-09-27 A |  | 100% |  |  |  |  |  | 16h | 16h |
| 166 | 1.1.3.1.5.1 | 充值功能 | 2d? | 2017-09-26 A | 2017-09-27 A | 160 | 100% |  |  |  |  | Lance | 16h | 16h |
| 167 | 1.1.3.1.6 | **直播列表** | 37.5d? | 2017-09-05 A | 2017-11-01 |  | 78% | 8.33d? | 2.88d |  |  |  | 72h | 56h |
| 168 | 1.1.3.1.6.1 | Hot及Following列表（包括指引banner） | 2d? | 2017-09-05 A | 2017-09-06 A |  | 100% |  |  |  | start no earlier than 2017-09-05 | Lance | 16h | 16h |
| 169 | 1.1.3.1.6.2 | 弹出Push（包括立即/预约邀请、预约倒计时） | 2d? | 2017-10-11 A | 2017-10-12 A | 7 | 100% |  |  |  |  | Max | 16h | 16h |
| 170 | 1.1.3.1.6.3 | 应邀功能（包括过渡界面及业务逻辑） | 3d? | 2017-10-24 A | 2017-10-26 A | 231 | 100% |  |  |  |  | Randy | 24h | 24h |
| 171 | 1.1.3.1.6.4 | Hot及Following列表头部广告 | 2d? | 2017-10-30 | 2017-11-01 | 151 |  |  | 2.88d |  |  | Calvin | 16h |  |
| 172 | 1.1.3.1.7 | **主播个人资料** | 20.5d? | 2017-09-27 A | 2017-10-31 |  | 82% | 3.62d? | 3.88d |  |  |  | 68h | 56h |
| 173 | 1.1.3.1.7.1 | 内嵌Web（包括JS交互）（点击图片显示单张处理） | 7d? | 2017-09-27 A | 2017-10-11 A | 257 | 100% |  |  |  |  | Alex | 56h | 56h |
| 174 | 1.1.3.1.7.2 | JS交互调整 | 1.5d? | 2017-10-30 | 2017-10-31 |  |  |  | 3.88d |  | start no earlier than 2017-10-30 | Alex | 12h |  |
| 175 | 1.1.3.1.8 | **直播间** | 36.75d? | 2017-08-29 A | 2017-10-24 A |  | 100% |  |  |  |  |  | 536h | 536h |
| 176 | 1.1.3.1.8.1 | **免费公开直播间** | 21.62d? | 2017-08-29 A | 2017-09-27 A |  | 100% |  |  |  |  |  | 236h | 236h |
| 177 | 1.1.3.1.8.1.1 | **直播间布局** | 1.62d? | 2017-08-29 A | 2017-08-30 A |  | 100% |  |  |  |  |  | 16h | 16h |
| 178 | 1.1.3.1.8.1.1.1 | 直播间布局（包括直播间头，操作控件） | 2d? | 2017-08-29 A | 2017-08-30 A |  | 100% |  |  |  | start no earlier than 2017-08-29 | Randy | 16h | 16h |

| ID | WBS | Task | Duration | Start | Finish | Predecessors | Complete | Resources | Work | Actual work |
| --- | --- | --- | --- | --- | --- | --- | --- | --- | --- | --- |
| 179 | 1.1.3.1.8.1.2 | **过渡界面** | 1.62d? | 2017-09-06 A | 2017-09-08 A |  | 100% |  | 16h | 16h |
| 180 | 1.1.3.1.8.1.2.1 | 过渡界面及业务逻辑（包括直播间已关闭、人数限制、余额不足等提示） | 2d? | 2017-09-06 A | 2017-09-08 A | 153 | 100% | Max | 16h | 16h |
| 181 | 1.1.3.1.8.1.3 | **主播（左上角）** | 2.62d? | 2017-08-30 A | 2017-09-04 A |  | 100% |  | 24h | 24h |
| 182 | 1.1.3.1.8.1.3.1 | 类型标识（包括点击弹出资费提示） | 2d? | 2017-08-30 A | 2017-09-01 A | 178 | 100% | Randy | 16h | 16h |
| 183 | 1.1.3.1.8.1.3.2 | 修改主播显示（左上角） | 0.5d? | 2017-09-01 A | 2017-09-01 A | 182 | 100% | Randy | 4h | 4h |
| 184 | 1.1.3.1.8.1.3.3 | 添加关注 | 0.5d? | 2017-09-01 A | 2017-09-04 A | 183 | 100% | Randy | 4h | 4h |
| 185 | 1.1.3.1.8.1.4 | **观众** | 15.25d? | 2017-09-04 A | 2017-09-25 A |  | 100% |  | 56h | 56h |
| 186 | 1.1.3.1.8.1.4.1 | 观众列表控件 | 3d? | 2017-09-04 A | 2017-09-06 A | 184 | 100% | Randy | 24h | 24h |
| 187 | 1.1.3.1.8.1.4.2 | 观众进入/退出直接间数量计算、进入直播间提示 | 0.5d? | 2017-09-25 A | 2017-09-25 A | 159 | 100% | Randy | 4h | 4h |
| 188 | 1.1.3.1.8.1.4.3 | 观众进入座驾播放控件 | 0.5d? | 2017-09-06 A | 2017-09-07 A | 186 | 100% | Randy | 4h | 4h |
| 189 | 1.1.3.1.8.1.4.4 | 播放进入座驾队列 | 3d? | 2017-09-07 A | 2017-09-11 A | 188 | 100% | Randy | 24h | 24h |
| 190 | 1.1.3.1.8.1.5 | **礼物** | 2.62d? | 2017-09-12 A | 2017-09-14 A |  | 100% |  | 24h | 24h |
| 191 | 1.1.3.1.8.1.5.1 | 调试礼物发送及显示 | 3d? | 2017-09-12 A | 2017-09-14 A | 189 | 100% | Randy | 24h | 24h |
| 192 | 1.1.3.1.8.1.6 | **弹幕** | 0.62d? | 2017-09-14 A | 2017-09-15 A |  | 100% |  | 8h | 8h |
| 193 | 1.1.3.1.8.1.6.1 | 显示及发送 | 1d? | 2017-09-14 A | 2017-09-15 A | 191 | 100% | Randy | 8h | 8h |
| 194 | 1.1.3.1.8.1.7 | **文本消息** | 2d? | 2017-09-15 A | 2017-09-19 A |  | 100% |  | 16h | 16h |
| 195 | 1.1.3.1.8.1.7.1 | 显示公告 | 2d? | 2017-09-15 A | 2017-09-19 A | 193 | 100% | Randy | 16h | 16h |
| 196 | 1.1.3.1.8.1.8 | **返点/余额** | 1.62d? | 2017-09-25 A | 2017-09-27 A |  | 100% |  | 16h | 16h |
| 197 | 1.1.3.1.8.1.8.1 | 返点及余额管理器 | 2d? | 2017-09-25 A | 2017-09-27 A | 187 | 100% | Randy | 16h | 16h |
| 198 | 1.1.3.1.8.1.9 | **直播间样式** | 1.12d? | 2017-09-19 A | 2017-09-20 A |  | 100% |  | 12h | 12h |
| 199 | 1.1.3.1.8.1.9.1 | 调试直播间样式（包括文本消息等） | 1.5d? | 2017-09-19 A | 2017-09-20 A | 195 | 100% | Randy | 12h | 12h |
| 200 | 1.1.3.1.8.1.10 | **直播结束** | 1d? | 2017-09-20 A | 2017-09-21 A |  | 100% |  | 8h | 8h |
| 201 | 1.1.3.1.8.1.10.1 | 直播结束显示界面 | 1d? | 2017-09-20 A | 2017-09-21 A | 199 | 100% | Randy | 8h | 8h |
| 202 | 1.1.3.1.8.1.11 | **直播间调试** | 4.25d? | 2017-09-21 A | 2017-09-27 A |  | 100% |  | 40h | 40h |
| 203 | 1.1.3.1.8.1.11.1 | 直播间调试 | 5d? | 2017-09-21 A | 2017-09-27 A | 201 | 100% | Randy | 40h | 40h |

| ID | WBS | Task | Duration | Start | Finish | Predecessors | Complete | Resources | Work | Actual work |
| --- | --- | --- | --- | --- | --- | --- | --- | --- | --- | --- |
| 204 | 1.1.3.1.8.2 | **付费公开直播间** | 6.75d? | 2017-09-27 A | 2017-10-12 A |  | 100% |  | 76h | 76h |
| 205 | 1.1.3.1.8.2.1 | **直播间布局** | 1.62d? | 2017-09-27 A | 2017-09-29 A |  | 100% |  | 16h | 16h |
| 206 | 1.1.3.1.8.2.1.1 | 直播间布局（包括直播间头，操作控件） | 2d? | 2017-09-27 A | 2017-09-29 A | 203 | 100% | Randy | 16h | 16h |
| 207 | 1.1.3.1.8.2.2 | **直播间样式** | 1.5d? | 2017-09-29 A | 2017-09-30 A |  | 100% |  | 12h | 12h |
| 208 | 1.1.3.1.8.2.2.1 | 调试直播间样式（包括文本消息等） | 1.5d? | 2017-09-29 A | 2017-09-30 A | 206 | 100% | Randy | 12h | 12h |
| 209 | 1.1.3.1.8.2.3 | **观众** | 0.25d? | 2017-09-30 A | 2017-10-07 A |  | 100% |  | 8h | 8h |
| 210 | 1.1.3.1.8.2.3.1 | 观众列表控件(显示与免费公开直播间不同) | 1d? | 2017-09-30 A | 2017-10-07 A | 208 | 100% | Randy | 8h | 8h |
| 211 | 1.1.3.1.8.2.4 | **返回/余额** | 0.75d? | 2017-10-07 A | 2017-10-09 A |  | 100% |  | 16h | 16h |
| 212 | 1.1.3.1.8.2.4.1 | 直播间显示返点控件 | 2d? | 2017-10-07 A | 2017-10-09 A | 210 | 100% | Randy | 16h | 16h |
| 213 | 1.1.3.1.8.2.5 | **直播间调试** | 2.62d? | 2017-10-09 A | 2017-10-12 A |  | 100% |  | 24h | 24h |
| 214 | 1.1.3.1.8.2.5.1 | 直播间调试 | 3d? | 2017-10-09 A | 2017-10-12 A | 212 | 100% | Randy | 24h | 24h |
| 215 | 1.1.3.1.8.3 | **普通私密直播间** | 28.25d? | 2017-09-08 A | 2017-10-24 A |  | 100% |  | 148h | 148h |
| 216 | 1.1.3.1.8.3.1 | **直播间布局** | 0.62d? | 2017-10-12 A | 2017-10-12 A |  | 100% |  | 8h | 8h |
| 217 | 1.1.3.1.8.3.1.1 | 直播间布局（包括直播间头，操作控件） | 1d? | 2017-10-12 A | 2017-10-12 A | 214 | 100% | Randy | 8h | 8h |
| 218 | 1.1.3.1.8.3.2 | **直播间样式** | 1.5d? | 2017-10-13 A | 2017-10-16 A |  | 100% |  | 12h | 12h |
| 219 | 1.1.3.1.8.3.2.1 | 调试直播间样式 | 1.5d? | 2017-10-13 A | 2017-10-16 A | 217 | 100% | Randy | 12h | 12h |
| 220 | 1.1.3.1.8.3.3 | **观众及主播** | 1d? | 2017-10-16 A | 2017-10-17 A |  | 100% |  | 8h | 8h |
| 221 | 1.1.3.1.8.3.3.1 | 观众及主播控件（包括点击弹出亲密度说明） | 1d? | 2017-10-16 A | 2017-10-17 A | 219 | 100% | Randy | 8h | 8h |
| 222 | 1.1.3.1.8.3.4 | **表情** | 1.62d? | 2017-10-17 A | 2017-10-19 A |  | 100% |  | 16h | 16h |
| 223 | 1.1.3.1.8.3.4.1 | 表情列表控件、表情管理器、显示及发送 | 2d? | 2017-10-17 A | 2017-10-19 A | 221 | 100% | Randy | 16h | 16h |
| 224 | 1.1.3.1.8.3.5 | **过渡界面** | 2d? | 2017-09-08 A | 2017-09-12 A |  | 100% |  | 16h | 16h |
| 225 | 1.1.3.1.8.3.5.1 | 过渡界面及业务逻辑（包括倒数及等待等逻辑） | 2d? | 2017-09-08 A | 2017-09-12 A | 180 | 100% | Max | 16h | 16h |
| 226 | 1.1.3.1.8.3.6 | **礼物** | 0.88d? | 2017-10-19 A | 2017-10-19 A |  | 100% |  | 8h | 8h |
| 227 | 1.1.3.1.8.3.6.1 | 推荐礼物功能 | 1d? | 2017-10-19 A | 2017-10-19 A | 223 | 100% | Randy | 8h | 8h |

| ID | WBS | Task | Duration | Start | Finish | Predecessors | Complete | Resources | Work | Actual work |
| --- | --- | --- | --- | --- | --- | --- | --- | --- | --- | --- |
| 228 | 1.1.3.1.8.3.7 | **双向视频** | 5.88d? | 2017-09-12 A | 2017-09-20 A |  | 100% |  | 56h | 56h |
| 229 | 1.1.3.1.8.3.7.1 | 上传视频管理器及视频控件（包括视频及声音开关） | 7d? | 2017-09-12 A | 2017-09-20 A | 225 | 100% | Max | 56h | 56h |
| 230 | 1.1.3.1.8.3.8 | **直播间调试** | 2.75d? | 2017-10-19 A | 2017-10-24 A |  | 100% |  | 24h | 24h |
| 231 | 1.1.3.1.8.3.8.1 | 直播间调试 | 3d? | 2017-10-19 A | 2017-10-24 A | 227 | 100% | Randy | 24h | 24h |
| 232 | 1.1.3.1.8.4 | **豪华私密直播间** | 6.12d? | 2017-09-19 A | 2017-09-27 A |  | 100% |  | 76h | 76h |
| 233 | 1.1.3.1.8.4.1 | **直播间布局** | 1d? | 2017-09-20 A | 2017-09-21 A |  | 100% |  | 8h | 8h |
| 234 | 1.1.3.1.8.4.1.1 | 直播间布局（包括直播间头，操作控件） | 1d? | 2017-09-20 A | 2017-09-21 A | 229 | 100% | Max | 8h | 8h |
| 235 | 1.1.3.1.8.4.2 | **直播间样式** | 1.12d? | 2017-09-21 A | 2017-09-22 A |  | 100% |  | 12h | 12h |
| 236 | 1.1.3.1.8.4.2.1 | 调试直播间样式 | 1.5d? | 2017-09-21 A | 2017-09-22 A | 234 | 100% | Max | 12h | 12h |
| 237 | 1.1.3.1.8.4.3 | **才艺点播** | 4d? | 2017-09-19 A | 2017-09-22 A |  | 100% |  | 32h | 32h |
| 238 | 1.1.3.1.8.4.3.1 | 才艺点播管理器 | 2d? | 2017-09-19 A | 2017-09-20 A | 144 | 100% | Calvin | 16h | 16h |
| 239 | 1.1.3.1.8.4.3.2 | 才艺点播界面 | 2d? | 2017-09-21 A | 2017-09-22 A | 238 | 100% | Calvin | 16h | 16h |
| 240 | 1.1.3.1.8.4.4 | **直播间调试** | 2.62d? | 2017-09-22 A | 2017-09-27 A |  | 100% |  | 24h | 24h |
| 241 | 1.1.3.1.8.4.4.1 | 直播间调试 | 3d? | 2017-09-22 A | 2017-09-27 A | 236 | 100% | Max | 24h | 24h |
| 242 | 1.1.3.1.9 | **预约直播** | 7.5d? | 2017-09-25 A | 2017-10-10 A |  | 100% |  | 60h | 60h |
| 243 | 1.1.3.1.9.1 | **预约直播界面** | 6.5d? | 2017-09-25 A | 2017-10-09 A |  | 100% |  | 52h | 52h |
| 244 | 1.1.3.1.9.1.1 | 日期控件、时间控件 | 1d? | 2017-09-25 A | 2017-09-25 A | 239 | 100% | Calvin | 8h | 8h |
| 245 | 1.1.3.1.9.1.2 | 选虚拟礼物功能 | 3d? | 2017-09-26 A | 2017-09-28 A | 244 | 100% | Calvin | 24h | 24h |
| 246 | 1.1.3.1.9.1.3 | 接收短信通知功能（包括验证手机号） | 1.5d? | 2017-09-29 A | 2017-09-30 A | 245 | 100% | Calvin | 12h | 12h |
| 247 | 1.1.3.1.9.1.4 | 提交预约接口及业务逻辑 | 1d? | 2017-09-30 A | 2017-10-09 A | 246 | 100% | Calvin | 8h | 8h |
| 248 | 1.1.3.1.9.2 | 预约成功界面 | 1d? | 2017-10-09 A | 2017-10-10 A | 247 | 100% | Calvin | 8h | 8h |
| 249 | 1.1.3.1.10 | **个人中心** | 16.5d? | 2017-09-25 A | 2017-10-23 A |  | 100% |  | 88h | 88h |
| 250 | 1.1.3.1.10.1 | **个人中心列表界面** | 1d? | 2017-10-10 A | 2017-10-11 A |  | 100% |  | 8h | 8h |
| 251 | 1.1.3.1.10.1.1 | 界面及接口 | 1d? | 2017-10-10 A | 2017-10-11 A | 248 | 100% | Calvin | 8h | 8h |

| ID | WBS | Task | Duration | Start | Finish | Predecessors | Complete | Remaining | Total slack | Free slack | Constraint | Resources | Work | Actual work |
| --- | --- | --- | --- | --- | --- | --- | --- | --- | --- | --- | --- | --- | --- | --- |
| 252 | 1.1.3.1.10.2 | **我的预约** | 4d? | 2017-10-11 A | 2017-10-17 A |  | 100% |  |  |  |  |  | 32h | 32h |
| 253 | 1.1.3.1.10.2.1 | 观众待确认列表、主播待确认列表、已确认列表、历史列表 | 4d? | 2017-10-11 A | 2017-10-17 A | 251 | 100% |  |  |  |  | Calvin | 32h | 32h |
| 254 | 1.1.3.1.10.3 | **我的背包** | 4d? | 2017-10-17 A | 2017-10-23 A |  | 100% |  |  |  |  |  | 32h | 32h |
| 255 | 1.1.3.1.10.3.1 | 试用券列表、礼物列表、座驾列表（包括使用座驾） | 4d? | 2017-10-17 A | 2017-10-23 A | 253 | 100% |  |  |  |  | Calvin | 32h | 32h |
| 256 | 1.1.3.1.10.4 | **我的等级** | 2d? | 2017-09-25 A | 2017-09-26 A |  | 100% |  |  |  |  |  | 16h | 16h |
| 257 | 1.1.3.1.10.4.1 | 内嵌Web页 | 2d? | 2017-09-25 A | 2017-09-26 A | 159 | 100% |  |  |  |  | Alex | 16h | 16h |
| 258 | 1.1.3.1.11 | **用户行为跟踪** | 5d? | 2017-10-26 | 2017-11-02 |  |  |  | 1.88d |  |  |  | 40h |  |
| 259 | 1.1.3.1.11.1 | GoogleAnalytics跟踪 | 5d? | 2017-10-26 | 2017-11-02 | 272 |  |  | 1.88d |  |  | Lance | 40h |  |
| 260 | 1.1.3.1.12 | **公共处理** | 18d? | 2017-09-07 A | 2017-09-30 A |  | 100% |  |  |  |  |  | 48h | 48h |
| 261 | 1.1.3.1.12.1 | 内嵌Web加载不成功，显示错误页 | 3d? | 2017-09-28 A | 2017-09-30 A | 166 | 100% |  |  |  |  | Lance | 24h | 24h |
| 262 | 1.1.3.1.12.2 | 列表网络错误 | 3d? | 2017-09-07 A | 2017-09-11 A | 168 | 100% |  |  |  |  | Lance | 24h | 24h |
| 263 | 1.1.3.1.13 | **勋章功能** | 2d? | 2017-10-27 A | 2017-10-30 A |  | 100% |  |  |  |  |  | 16h | 16h |
| 264 | 1.1.3.1.13.1 | 直播间聊天列表增加勋章显示 | 2d? | 2017-10-27 A | 2017-10-30 A | 170 | 100% |  |  |  |  | Randy | 16h | 16h |
| 265 | 1.1.3.2 | 调试 | 10d? | 2017-11-02 | 2017-11-15 | 139 |  |  | 1.75d |  |  | Randy; Max | 160h |  |
| 266 | 2 | **QN项目** | 30.5d? | 2017-09-11 A | 2017-10-27 |  | 46% | 16.42d? | 0.88d |  |  |  | 104h | 48h |
| 267 | 2.1 | **Android男士端** | 4.25d? | 2017-09-11 A | 2017-09-15 A |  | 100% |  |  |  |  |  | 40h | 40h |
| 268 | 2.1.1 | **3.2.8版本** | 4.25d? | 2017-09-11 A | 2017-09-15 A |  | 100% |  |  |  |  |  | 40h | 40h |
| 269 | 2.1.1.1 | 处理bug | 5d? | 2017-09-11 A | 2017-09-15 A | 15 | 100% |  |  |  | start no earlier than 2017-09-11 | Jagger | 40h | 40h |
| 270 | 2.2 | **iOS男士端** | 8d? | 2017-10-17 A | 2017-10-27 |  | 13% | 7d? | 0.88d |  |  |  | 64h | 8h |
| 271 | 2.2.1 | **1.1.0版本** | 7d? | 2017-10-17 | 2017-10-26 |  |  |  | 1.88d |  |  |  | 56h |  |
| 272 | 2.2.1.1 | 处理bug | 7d? | 2017-10-17 | 2017-10-26 | 157 |  |  | 1.88d | 0d |  | Lance | 56h |  |
| 273 | 2.2.2 | **1.1.1版本** | 1d? | 2017-10-26 A | 2017-10-27 A |  | 100% |  |  |  |  |  | 8h | 8h |
| 274 | 2.2.2.1 | 开发风控功能（包括女士资料、意向信、EMF、LiveChat、CamShare） | 1d? | 2017-10-26 A | 2017-10-27 A | 151 | 100% |  |  |  |  | Calvin | 8h | 8h |
