Schedule from MS Project, 2017-12-18 to 2018-01-18.

## Calendars

- 标准: Mon-Fri 08:00-12:00, 13:00-17:00; Sat-Sun off. Exceptions (off unless hours are given): 2017-12-18 to 2018-01-20 08:00-12:00, 13:00-17:00, 18:00-21:00 (周二加班, recurring), 2017-12-23 to 2018-02-02 08:00-12:00, 13:00-17:00 (周末加班, recurring), 2017-12-30 (元旦不加班), 2018-01-01 (元旦放假).

## Resources

| Resource |
| --- |
| Alex |
| Randy |
| Hunter |
| Jagger |
| Harry |
| Max |
| Lance |
| Calvin |
| Samson |

## Schedule

| ID | WBS | Task | Duration | Start | Finish | Predecessors | Total slack | Free slack | Constraint | Resources | Work |
| --- | --- | --- | --- | --- | --- | --- | --- | --- | --- | --- | --- |
| 1 | 1 | **独立App** | 27d? | 2017-12-18 | 2018-01-18 |  | 0d |  |  |  | 1688h |
| 2 | 1.1 | **公共模块** | 15d? | 2017-12-19 | 2018-01-05 |  | 11d |  |  |  | 120h |
| 3 | 1.1.1 | **接口** | 15d? | 2017-12-19 | 2018-01-05 |  | 11d |  |  |  | 120h |
| 4 | 1.1.1.1 | **注册/登录相关** | 4.5d? | 2017-12-19 | 2017-12-23 |  | 11d |  |  |  | 36h |
| 5 | 1.1.1.1.1 | 邮箱相关接口（注册、登录、忘记密码） | 1.5d? | 2017-12-19 | 2017-12-20 |  | 11d | 0d | start no earlier than 2017-12-19 | Alex | 12h |
| 6 | 1.1.1.1.2 | FB相关接口（FB登录、检测邮箱状态、重新绑定、FB注册） | 2d? | 2017-12-20 | 2017-12-22 | 5 | 11d | 0d |  | Alex | 16h |
| 7 | 1.1.1.1.3 | 上传头像接口 | 1d? | 2017-12-22 | 2017-12-23 | 6 | 11d | 0d |  | Alex | 8h |
| 8 | 1.1.1.2 | **分享相关** | 0.5d? | 2017-12-23 | 2017-12-23 |  | 11d |  |  |  | 4h |
| 9 | 1.1.1.2.1 | 获取分享URL接口 | 0.5d? | 2017-12-23 | 2017-12-23 | 7 | 11d | 0d |  | Alex | 4h |
| 10 | 1.1.1.3 | **推送相关** | 0.5d? | 2017-12-23 | 2017-12-25 |  | 11d |  |  |  | 4h |
| 11 | 1.1.1.3.1 | 手动注销接口(包括注销token绑定) | 0.5d? | 2017-12-23 | 2017-12-25 | 9 | 11d | 0d |  | Alex | 4h |
| 12 | 1.1.1.4 | **设置相关** | 1d? | 2017-12-25 | 2017-12-26 |  | 11d |  |  |  | 8h |
| 13 | 1.1.1.4.1 | 提交Feedback接口 | 0.5d? | 2017-12-25 | 2017-12-25 | 11 | 11d | 0d |  | Alex | 4h |
| 14 | 1.1.1.4.2 | 修改同步配置接口，增加“Terms of Use”及“Privacy Policy” | 0.5d? | 2017-12-25 | 2017-12-26 | 13 | 11d | 0d |  | Alex | 4h |
| 15 | 1.1.1.5 | **编辑个人资料相关** | 2d | 2017-12-26 | 2017-12-27 |  | 11d |  |  |  | 16h |
| 16 | 1.1.1.5.1 | 获取个人信息接口 | 0.5d | 2017-12-26 | 2017-12-26 | 14 | 11d | 0d |  | Alex | 4h |
| 17 | 1.1.1.5.2 | 提交用户头像接口 | 0.5d | 2017-12-26 | 2017-12-26 | 16 | 11d | 0d |  | Alex | 4h |
| 18 | 1.1.1.5.3 | 提交个人信息接口 | 0.5d | 2017-12-26 | 2017-12-27 | 17 | 11d | 0d |  | Alex | 4h |
| 19 | 1.1.1.5.4 | 发送验证邮件接口 | 0.5d | 2017-12-27 | 2017-12-27 | 18 | 11d | 0d |  | Alex | 4h |
| 20 | 1.1.1.6 | **充值相关** | 1.5d | 2017-12-27 | 2017-12-29 |  | 11d |  |  |  | 12h |
| 21 | 1.1.1.6.1 | 获取待购产品接口 | 0.5d | 2017-12-27 | 2017-12-28 | 19 | 11d | 0d |  | Alex | 4h |
| 22 | 1.1.1.6.2 | 生成订单接口 | 0.5d | 2017-12-28 | 2017-12-28 | 21 | 11d | 0d |  | Alex | 4h |
| 23 | 1.1.1.6.3 | 提交订单接口 | 0.5d | 2017-12-28 | 2017-12-29 | 22 | 11d | 0d |  | Alex | 4h |
| 24 | 1.1.1.7 | 调试 | 5d? | 2017-12-29 | 2018-01-05 | 23 | 11d |  |  | Alex | 40h |

| ID | WBS | Task | Duration | Start | Finish | Predecessors | Total slack | Free slack | Constraint | Resources | Work |
| --- | --- | --- | --- | --- | --- | --- | --- | --- | --- | --- | --- |
| 25 | 1.2 | **Android** | 27d? | 2017-12-18 | 2018-01-18 |  | 0d |  |  |  | 728h |
| 26 | 1.2.1 | **开发** | 17d? | 2017-12-18 | 2018-01-06 |  | 0d |  |  |  | 488h |
| 27 | 1.2.1.1 | 独立工程 | 5d? | 2017-12-18 | 2017-12-22 |  | 0d |  |  | Hunter | 40h |
| 28 | 1.2.1.2 | **跟踪相关** | 10d? | 2017-12-25 | 2018-01-06 |  | 1.62d |  |  |  | 80h |
| 29 | 1.2.1.2.1 | 广告跟踪（AppsFlyer、Facebook、Firebase） | 5d? | 2017-12-25 | 2017-12-29 | 66 | 1.62d | 0d | start no earlier than 2017-12-25 | Samson | 40h |
| 30 | 1.2.1.2.2 | GA跟踪 | 5d? | 2017-12-29 | 2018-01-06 | 29 | 1.62d |  |  | Samson | 40h |
| 31 | 1.2.1.3 | **注册/登录** | 8d? | 2017-12-18 | 2017-12-26 |  | 0d |  |  |  | 56h |
| 32 | 1.2.1.3.1 | 登录管理器(包括保存token/帐号密码、注销接口、状态机、调用三方注销、被踢、token失败回到登录界面等逻辑) | 3d? | 2017-12-22 | 2017-12-26 | 27 | 0d |  |  | Hunter | 24h |
| 33 | 1.2.1.3.2 | 登录首页界面（包括播放视频、提供FB及邮箱注册/登录入口等） | 2d? | 2017-12-18 | 2017-12-19 |  | 0d |  |  | Jagger | 16h |
| 34 | 1.2.1.3.3 | **邮箱** | 2d? | 2017-12-19 | 2017-12-21 |  | 0d |  |  |  | 16h |
| 35 | 1.2.1.3.3.1 | 邮箱注册界面、邮箱登录界面、忘记密码界面 | 2d? | 2017-12-19 | 2017-12-21 | 33 | 0d |  |  | Jagger | 16h |
| 36 | 1.2.1.4 | **Facebook注册/登录** | 10d? | 2017-12-18 | 2017-12-28 |  | 0d |  |  |  | 80h |
| 37 | 1.2.1.4.1 | FacebookSDK测试demo（包括登录授权、获取用户信息(头像、昵称、生日、性别)、分享） | 5d? | 2017-12-18 | 2017-12-22 |  | 0d |  |  | Harry | 40h |
| 38 | 1.2.1.4.2 | FacebookSDK嵌入App | 2d? | 2017-12-22 | 2017-12-25 | 37 | 0d |  |  | Harry | 16h |
| 39 | 1.2.1.4.3 | 添加邮箱/邮箱更换界面及业务逻辑 | 1d? | 2017-12-25 | 2017-12-26 | 38 | 0d |  |  | Harry | 8h |
| 40 | 1.2.1.4.4 | 邮箱已注册界面及业务逻辑 | 1d? | 2017-12-26 | 2017-12-27 | 39 | 0d |  |  | Harry | 8h |
| 41 | 1.2.1.4.5 | 填写资料业务逻辑 | 1d? | 2017-12-27 | 2017-12-28 | 40 | 0d |  |  | Harry | 8h |
| 42 | 1.2.1.5 | 填写资料界面及业务逻辑（根据注册类型不同，调不同接口）（包括日期控件） | 4d? | 2017-12-21 | 2017-12-26 | 35 | 0d |  |  | Jagger | 32h |
| 43 | 1.2.1.6 | **直播间分享（包括免费公开直播间、付费公开直播间）** | 3d? | 2017-12-28 | 2018-01-02 |  | 0d |  |  |  | 24h |
| 44 | 1.2.1.6.1 | 修改直播间界面及增加分享控件 | 1d? | 2017-12-28 | 2017-12-29 | 41 | 0d |  |  | Harry | 8h |
| 45 | 1.2.1.6.2 | 分享功能实现（包括Facebook分享、Copy Link、系统分享） | 2d? | 2017-12-29 | 2018-01-02 | 44 | 0d |  |  | Harry | 16h |
| 46 | 1.2.1.7 | **个人中心** | 7d? | 2017-12-26 | 2018-01-04 |  | 0d |  |  |  | 80h |
| 47 | 1.2.1.7.1 | 个人中心界面（修改个人中心界面（包括增加每次显示获取余额逻辑）、修改hot列表入口） | 2d? | 2017-12-26 | 2017-12-28 | 32 | 0d |  |  | Hunter | 16h |
| 48 | 1.2.1.7.2 | 我的金币（仅调试） | 2d? | 2017-12-28 | 2018-01-02 | 47 | 0d |  |  | Hunter | 16h |

| ID | WBS | Task | Duration | Start | Finish | Predecessors | Total slack | Free slack | Constraint | Resources | Work |
| --- | --- | --- | --- | --- | --- | --- | --- | --- | --- | --- | --- |
| 49 | 1.2.1.7.3 | **设置** | 3d? | 2018-01-02 | 2018-01-04 |  | 0d |  |  |  | 24h |
| 50 | 1.2.1.7.3.1 | Feedback界面及业务逻辑 | 1d? | 2018-01-02 | 2018-01-02 | 48 | 0d |  |  | Hunter | 8h |
| 51 | 1.2.1.7.3.2 | About Us界面及业务逻辑 | 1d? | 2018-01-02 | 2018-01-03 | 50 | 0d |  |  | Hunter | 8h |
| 52 | 1.2.1.7.3.3 | Term of Use界面及Privacy Pollicy界面（内嵌Web页面） | 1d? | 2018-01-03 | 2018-01-04 | 51 | 0d |  |  | Hunter | 8h |
| 53 | 1.2.1.7.4 | **编辑个人资料** | 3d? | 2017-12-26 | 2017-12-29 |  | 0d |  |  |  | 24h |
| 54 | 1.2.1.7.4.1 | 编辑个人资料界面 | 2d? | 2017-12-26 | 2017-12-28 | 42 | 0d |  |  | Jagger | 16h |
| 55 | 1.2.1.7.4.2 | 验证邮箱界面 | 1d? | 2017-12-28 | 2017-12-29 | 54 | 0d |  |  | Jagger | 8h |
| 56 | 1.2.1.8 | 升级功能（强制升级、普通升级提示） | 1d? | 2017-12-29 | 2018-01-02 | 55 | 0d |  |  | Jagger | 8h |
| 57 | 1.2.1.9 | **调试** | 5d? | 2018-01-02 | 2018-01-06 | 56 | 0d |  |  |  | 88h |
| 58 | 1.2.1.9.1 | Jagger调试 | 5d? | 2018-01-02 | 2018-01-06 |  | 0d |  |  | Jagger | 40h |
| 59 | 1.2.1.9.2 | Hunter调试 | 2d? | 2018-01-04 | 2018-01-06 | 52 | 0d |  |  | Hunter | 16h |
| 60 | 1.2.1.9.3 | Harry调试 | 4d? | 2018-01-02 | 2018-01-06 | 45 | 0d |  |  | Harry | 32h |
| 61 | 1.2.2 | 测试 | 10d | 2018-01-06 | 2018-01-18 | 26 | 0d |  |  | Hunter; Harry; Jagger | 240h |
| 62 | 1.3 | **iOS** | 27d? | 2017-12-18 | 2018-01-18 |  | 0d |  |  |  | 840h |
| 63 | 1.3.1 | **开发** | 17d? | 2017-12-18 | 2018-01-06 |  | 0d |  |  |  | 520h |
| 64 | 1.3.1.1 | 独立工程 | 5d? | 2017-12-18 | 2017-12-22 |  | 8d |  |  | Max | 40h |
| 65 | 1.3.1.2 | **跟踪相关** | 16d? | 2017-12-18 | 2018-01-05 |  | 1d |  |  |  | 72h |
| 66 | 1.3.1.2.1 | 广告跟踪（AppsFlyer、Facebook、Firebase） | 5d? | 2017-12-18 | 2017-12-22 |  | 3d | 1.38d | start no earlier than 2017-12-18 | Samson | 40h |
| 67 | 1.3.1.2.2 | GA跟踪 | 4d | 2018-01-02 | 2018-01-05 | 93 | 1d |  |  | Lance | 32h |
| 68 | 1.3.1.3 | **注册/登录** | 9d? | 2017-12-18 | 2017-12-27 |  | 0d |  |  |  | 72h |
| 69 | 1.3.1.3.1 | 登录管理器(包括保存token/帐号密码、注销接口、状态机、调用三方注销、被踢、token失败回到登录界面等逻辑) | 5d? | 2017-12-18 | 2017-12-22 |  | 0d |  |  | Calvin | 40h |
| 70 | 1.3.1.3.2 | 登录首页界面（包括播放视频、提供FB及邮箱注册/登录入口等） | 2d? | 2017-12-22 | 2017-12-25 | 69 | 0d |  |  | Calvin | 16h |
| 71 | 1.3.1.3.3 | **邮箱** | 2d? | 2017-12-25 | 2017-12-27 |  | 0d |  |  |  | 16h |
| 72 | 1.3.1.3.3.1 | 邮箱注册界面、邮箱登录界面、忘记密码界面 | 2d? | 2017-12-25 | 2017-12-27 | 70 | 0d |  |  | Calvin | 16h |

| ID | WBS | Task | Duration | Start | Finish | Predecessors | Total slack | Resources | Work |
| --- | --- | --- | --- | --- | --- | --- | --- | --- | --- |
| 73 | 1.3.1.4 | **Facebook注册/登录** | 10d? | 2017-12-18 | 2017-12-28 |  | 0d |  | 80h |
| 74 | 1.3.1.4.1 | FacebookSDK测试demo（包括登录授权、获取用户信息(头像、昵称、生日、性别)、分享） | 5d? | 2017-12-18 | 2017-12-22 |  | 0d | Randy | 40h |
| 75 | 1.3.1.4.2 | FacebookSDK嵌入App | 2d? | 2017-12-22 | 2017-12-25 | 74 | 0d | Randy | 16h |
| 76 | 1.3.1.4.3 | 添加邮箱/邮箱更换界面及业务逻辑 | 1d? | 2017-12-25 | 2017-12-26 | 75 | 0d | Randy | 8h |
| 77 | 1.3.1.4.4 | 邮箱已注册界面及业务逻辑 | 1d? | 2017-12-26 | 2017-12-27 | 76 | 0d | Randy | 8h |
| 78 | 1.3.1.4.5 | 填写资料业务逻辑 | 1d? | 2017-12-27 | 2017-12-28 | 77 | 0d | Randy | 8h |
| 79 | 1.3.1.5 | 填写资料界面及业务逻辑（根据注册类型不同，调不同接口）（包括日期控件） | 4d? | 2017-12-18 | 2017-12-21 |  | 0d | Lance | 32h |
| 80 | 1.3.1.6 | **直播间分享（包括免费公开直播间、付费公开直播间）** | 3d? | 2017-12-28 | 2018-01-02 |  | 0d |  | 24h |
| 81 | 1.3.1.6.1 | 修改直播间界面及增加分享控件 | 1d? | 2017-12-28 | 2017-12-29 | 78 | 0d | Randy | 8h |
| 82 | 1.3.1.6.2 | 分享功能实现（包括Facebook分享、Copy Link、系统分享） | 2d? | 2017-12-29 | 2018-01-02 | 81 | 0d | Randy | 16h |
| 83 | 1.3.1.7 | **个人中心** | 8d? | 2017-12-21 | 2018-01-02 |  | 0d |  | 80h |
| 84 | 1.3.1.7.1 | 个人中心界面（修改个人中心界面（包括增加每次显示获取余额逻辑）、修改hot列表入口） | 2d? | 2017-12-27 | 2017-12-29 | 72 | 0d | Calvin | 16h |
| 85 | 1.3.1.7.2 | **我的金币** | 2d? | 2017-12-21 | 2017-12-23 |  | 0d |  | 16h |
| 86 | 1.3.1.7.2.1 | 支付界面及业务逻辑 | 2d? | 2017-12-21 | 2017-12-23 | 79 | 0d | Lance | 16h |
| 87 | 1.3.1.7.3 | **设置** | 3d? | 2017-12-23 | 2017-12-27 |  | 0d |  | 24h |
| 88 | 1.3.1.7.3.1 | Feedback界面及业务逻辑 | 1d? | 2017-12-23 | 2017-12-25 | 86 | 0d | Lance | 8h |
| 89 | 1.3.1.7.3.2 | About Us界面及业务逻辑 | 1d? | 2017-12-25 | 2017-12-26 | 88 | 0d | Lance | 8h |
| 90 | 1.3.1.7.3.3 | Term of Use界面及Privacy Pollicy界面（内嵌Web页面） | 1d? | 2017-12-26 | 2017-12-27 | 89 | 0d | Lance | 8h |
| 91 | 1.3.1.7.4 | **编辑个人资料** | 3d? | 2017-12-27 | 2018-01-02 |  | 0d |  | 24h |
| 92 | 1.3.1.7.4.1 | 编辑个人资料界面 | 2d? | 2017-12-27 | 2017-12-29 | 90 | 0d | Lance | 16h |
| 93 | 1.3.1.7.4.2 | 验证邮箱界面 | 1d? | 2017-12-29 | 2018-01-02 | 92 | 0d | Lance | 8h |
| 94 | 1.3.1.8 | 升级功能（强制升级、普通升级提示） | 1d? | 2017-12-29 | 2018-01-02 | 84 | 0d | Calvin | 8h |
| 95 | 1.3.1.9 | **调试** | 5d? | 2018-01-02 | 2018-01-06 |  | 0d |  | 112h |
| 96 | 1.3.1.9.1 | Calvin调试 | 5d? | 2018-01-02 | 2018-01-06 | 94 | 0d | Calvin | 40h |
| 97 | 1.3.1.9.2 | Lance调试 | 5d? | 2018-01-02 | 2018-01-06 | 93 | 0d | Lance | 40h |
| 98 | 1.3.1.9.3 | Randy调试 | 4d? | 2018-01-02 | 2018-01-06 | 82 | 0d | Randy | 32h |
| 99 | 1.3.2 | 测试 | 10d? | 2018-01-06 | 2018-01-18 | 63 | 0d | Max; Calvin; Lance; Randy | 320h |
